# GHealth Project

How a schedule from MS Project changed from version to version. A marks actual dates.

## Version 1 (data date 2016-04-03, saved 2016-04-02)

| ID | WBS | Task | Duration | Start | Finish | Predecessors | Complete | Constraint |
| --- | --- | --- | --- | --- | --- | --- | --- | --- |
| 1 | 1 | **Scope** | 1d | 2016-03-13 17:00 | 2016-03-13 22:00 |  |  |  |
| 2 |  | Define preliminary resources | 1d | 2016-03-13 17:00 | 2016-03-13 22:00 |  |  |  |
| 3 |  | Scope complete | 0d | 2016-03-13 17:00 | 2016-03-13 17:00 |  |  | start no earlier than 2016-04-03 22:00 |
| 4 | 3 | **Submission ONE: Project Planning, Use Case Diagram, Questions, & Acceptance Testing** | 15d | 2016-03-14 17:00 A | 2016-04-03 22:00 |  | 4% |  |
| 5 | 3.1 | **week 1** | 7d | 2016-03-14 17:00 A | 2016-03-22 22:00 |  |  |  |
| 6 |  | Planning of a project | 1d | 2016-03-14 17:00 A | 2016-03-14 22:00 | 2 |  |  |
| 7 | 3.1.2 | **Design of a system Step1** | 4d | 2016-03-15 17:00 A | 2016-03-20 22:00 | 6 |  |  |
| 8 |  | Creating Use Case diagram | 1d | 2016-03-15 17:00 A | 2016-03-15 22:00 | 6 |  |  |
| 9 | 3.1.2.2 | **Description of the Use Cases (Creating flow of events, info notes, etc.)** | 3d | 2016-03-16 17:00 A | 2016-03-20 22:00 | 8 |  |  |
| 10 |  | Description of <Viewing lab test referral> | 2.5h | 2016-03-16 17:00 A | 2016-03-16 19:30 |  |  |  |
| 11 |  | Description of <Insert lab test results> | 2.5h | 2016-03-16 17:00 A | 2016-03-16 19:30 |  |  |  |
| 12 |  | Description of <Add pictures> | 2.5h | 2016-03-16 17:00 A | 2016-03-16 19:30 |  |  |  |
| 13 |  | Description of <Logout>,<Login> | 2.5h | 2016-03-16 17:00 A | 2016-03-16 19:30 |  |  |  |
| 14 |  | Description of <View workers details> | 2.5h | 2016-03-16 17:00 A | 2016-03-16 19:30 |  |  |  |
| 15 |  | Description of <Produce report by period> | 2.5h | 2016-03-16 17:00 A | 2016-03-16 19:30 |  |  |  |
| 16 |  | Description of <Produce report for the last months> | 2.5h | 2016-03-16 17:00 A | 2016-03-16 19:30 |  |  |  |
| 17 |  | Description of <Produce report by N months> | 2.5h | 2016-03-16 17:00 A | 2016-03-16 19:30 |  |  |  |
| 18 |  | Description of <Announced for arrival> | 2.5h | 2016-03-16 17:00 A | 2016-03-16 19:30 |  |  |  |
| 19 |  | Description of <Viewing Medical history> | 2.5h | 2016-03-16 17:00 A | 2016-03-16 19:30 |  |  |  |
| 20 |  | Description of <Send approve> | 2.5h | 2016-03-16 17:00 A | 2016-03-16 19:30 |  |  |  |
| 21 |  | Description of <make apponitment> | 2.5h | 2016-03-16 17:00 A | 2016-03-16 19:30 |  |  |  |
| 22 |  | Description of <Insert referral from doctor> | 2.5h | 2016-03-16 17:00 A | 2016-03-16 19:30 |  |  |  |
| 23 |  | Description of <Record appointment> | 2.5h | 2016-03-16 17:00 A | 2016-03-16 19:30 |  |  |  |
| 24 |  | Description of <verifying details> | 2.5h | 2016-03-16 17:00 A | 2016-03-16 19:30 |  |  |  |
| 25 |  | Description of <View patient medical history> | 2.5h | 2016-03-16 17:00 A | 2016-03-16 19:30 |  |  |  |
| 26 |  | Description of <Produce referral for lab test> | 2.5h | 2016-03-16 17:00 A | 2016-03-16 19:30 |  |  |  |
| 27 |  | Description of <view lab results> | 2.5h | 2016-03-16 17:00 A | 2016-03-16 19:30 |  |  |  |
| 28 |  | Description of <Ask for medical details> | 2.5h | 2016-03-17 22:00 A | 2016-03-20 19:30 |  |  |  |
| 29 |  | Description of <Send report to the referring doctor> | 2.5h | 2016-03-20 17:00 A | 2016-03-20 19:30 |  |  |  |
| 30 |  | Description of <Get medical details by expertise> | 2.5h | 2016-03-20 17:00 A | 2016-03-20 19:30 |  |  |  |
| 31 |  | Meeting - Review Use Case Diagram | 2h | 2016-03-21 17:00 A | 2016-03-21 19:00 | 9 |  |  |
| 32 |  | Fixing found problems | 1d | 2016-03-22 17:00 A | 2016-03-22 22:00 | 31 |  |  |
| 33 |  | Use Case Diagram is finished | 0d | 2016-03-14 17:00 A | 2016-03-14 17:00 |  | 99% |  |
| 34 | 3.2 | **week 2** | 7d | 2016-03-22 17:00 A | 2016-03-30 22:00 |  | 8% |  |
| 35 |  | Creating Project Time Management | 0d | 2016-03-22 17:00 A | 2016-03-22 17:00 A | 8 | 100% |  |
| 36 | 3.2.2 | **Creating Acceptance Testing** | 3d | 2016-03-23 17:00 A | 2016-03-27 22:00 | 9 | 9% |  |
| 37 |  | Test Case for functionality of <Viewing lab test referral> | 2.5h | 2016-03-23 17:00 A | 2016-03-24 19:30 | 10 |  |  |
| 38 |  | Test Case for functionality of <Insert lab test results> | 2.5h | 2016-03-23 17:00 A | 2016-03-24 19:30 | 11 |  |  |
| 39 |  | Test Case for functionality of <Add pictures> | 2.5h | 2016-03-23 17:00 A | 2016-03-24 19:30 | 12 |  |  |
| 40 |  | Test Case for functionality of <Logout>,<Login> | 2.5h | 2016-03-23 17:00 A | 2016-03-24 19:30 | 13 |  |  |
| 41 |  | Test Case for functionality of <View workers details> | 2.5h | 2016-03-23 17:00 A | 2016-03-24 19:30 | 14 |  |  |
| 42 |  | Test Case for functionality of <Produce report by period> | 2.5h | 2016-03-23 17:00 A | 2016-03-24 19:30 | 15 |  |  |
| 43 |  | Test Case for functionality of <Produce report for the last months> | 2.5h | 2016-03-23 17:00 A | 2016-03-24 19:30 | 16 |  |  |
| 44 |  | Test Case for functionality of <Produce report by N months> | 2.5h | 2016-03-23 17:00 A | 2016-03-24 19:30 | 17 |  |  |
| 45 |  | Test Case for functionality of <Announced for arrival> | 2.5h | 2016-03-24 17:00 A | 2016-03-27 19:30 | 18 |  |  |
| 46 |  | Test Case for functionality of <Viewing Medical history> | 2.5h | 2016-03-24 17:00 A | 2016-03-27 19:30 | 19 |  |  |
| 47 |  | Test Case for functionality of <Send approve> | 2.5h | 2016-03-24 17:00 A | 2016-03-27 19:30 | 20 |  |  |
| 48 |  | Test Case for functionality of <make apponitment> | 2.5h | 2016-03-24 17:00 A | 2016-03-27 19:30 | 21 |  |  |
| 49 |  | Test Case for functionality of <Insert referral from doctor> | 2.5h | 2016-03-24 17:00 A | 2016-03-27 19:30 | 22 |  |  |
| 50 |  | Test Case for functionality of <Record appointment> | 2.5h | 2016-03-24 17:00 A | 2016-03-27 19:30 | 23 |  |  |
| 51 |  | Test Case for functionality of <verifying details> | 2.5h | 2016-03-24 17:00 A | 2016-03-27 19:30 | 24 |  |  |
| 52 |  | Test Case for functionality of <View patient medical history> | 2.5h | 2016-03-24 17:00 A | 2016-03-27 19:30 | 25 |  |  |
| 53 |  | Test Case for functionality of <Produce referral for lab test> | 2.5h | 2016-03-27 17:00 A | 2016-03-27 19:30 | 26 |  |  |
| 54 |  | Test Case for functionality of <view lab results> | 2.5h | 2016-03-27 17:00 A | 2016-03-27 19:30 | 27 |  |  |
| 55 |  | Test Case for functionality of <Ask for medical details> | 2.5h | 2016-03-27 17:00 A | 2016-03-27 19:30 | 28 |  |  |
| 56 |  | Test Case for functionality of <Send report to the referring doctor> | 2.5h | 2016-03-27 17:00 A | 2016-03-27 19:30 | 29 |  |  |
| 57 |  | Test Case for functionality of <Get medical details by expertise> | 2.5h | 2016-03-27 17:00 A | 2016-03-27 19:30 | 30 |  |  |
| 58 |  | Meeting - Review Acceptance Testing | 0h | 2016-03-27 17:00 A | 2016-03-27 17:00 A |  | 100% |  |
| 59 |  | Acceptance Testing is finished | 5h | 2016-03-27 17:00 A | 2016-03-27 22:00 A |  | 100% |  |
| 60 |  | Answer questions | 2.5h | 2016-03-29 17:00 A | 2016-03-29 19:30 |  |  |  |
| 61 |  | Meeting - Review all tasks | 2.5h | 2016-03-30 17:00 A | 2016-03-30 19:30 | 9, 35, 36, 8 |  |  |
| 62 |  | Submit assignment ONE | 1d | 2016-04-04 17:00 | 2016-04-04 22:00 |  |  |  |
| 63 | 5 | **Submission TWO: Class, Activity, Sequence, Package, Deployment Diagrams, Prototype, Questions** | 20d | 2016-04-05 17:00 | 2016-05-02 22:00 | 62 |  |  |
| 64 | 5.1 | **Design of a system Step2** | 20d | 2016-04-05 17:00 | 2016-05-02 22:00 |  |  |  |
| 65 | 5.1.1 | **week 3** | 7d | 2016-04-05 17:00 | 2016-04-13 22:00 |  |  |  |
| 66 | 5.1.1.1 | **Creating Class diagram** | 3d | 2016-04-05 17:00 | 2016-04-07 22:00 | 6, 8 |  |  |
| 67 |  | Defining packages | 1d | 2016-04-05 17:00 | 2016-04-05 22:00 |  |  |  |
| 68 |  | Defining Classes and Interfaces | 1.5d | 2016-04-06 17:00 | 2016-04-07 19:30 |  |  |  |
| 69 |  | Defining APIs, Controllers, and Entities | 1.5d | 2016-04-06 17:00 | 2016-04-07 19:30 |  |  |  |
| 70 |  | Meeting - Review Class Diagram | 2h | 2016-04-07 17:00 | 2016-04-07 19:00 |  |  |  |

| ID | WBS | Task | Duration | Start | Finish | Predecessors | Total float |
| --- | --- | --- | --- | --- | --- | --- | --- |
| 71 |  | Class Diagram is finished | 0d | 2016-04-05 17:00 | 2016-04-05 17:00 |  |  |
| 72 | 5.1.1.2 | **Creating Activity Diagrams** | 4d | 2016-04-10 17:00 | 2016-04-13 22:00 | 9 |  |
| 73 |  | <Log in, Log out> activity diagrams | 2.5h | 2016-04-10 17:00 | 2016-04-10 19:30 | 37 |  |
| 74 |  | <Updating client details> activity diagram | 2.5h | 2016-04-10 17:00 | 2016-04-10 19:30 | 38 |  |
| 75 |  | <Order fuel for home use> activity diagram | 2.5h | 2016-04-10 17:00 | 2016-04-10 19:30 | 39 |  |
| 76 |  | <Follow order> activity diagram | 2.5h | 2016-04-10 17:00 | 2016-04-10 19:30 | 40 |  |
| 77 |  | <Client registration> activity diagram | 2.5h | 2016-04-10 17:00 | 2016-04-10 19:30 | 41 |  |
| 78 |  | <Watch Quarterly Reports> activity diagram | 2.5h | 2016-04-10 17:00 | 2016-04-10 19:30 | 42 |  |
| 79 |  | <Produce customer data rating> activity diagram | 2.5h | 2016-04-10 17:00 | 2016-04-10 19:30 | 43 |  |
| 80 |  | <Campaign pattern defining> activity diagram | 2.5h | 2016-04-10 17:00 | 2016-04-10 19:30 | 44 |  |
| 81 |  | <Update maximum fuel price> activity diagram | 2.5h | 2016-04-11 17:00 | 2016-04-11 19:30 | 45 |  |
| 82 |  | <Planes Price change request> activity diagram | 2.5h | 2016-04-11 17:00 | 2016-04-11 19:30 | 46 |  |
| 83 |  | <Update planes price> activity diagram | 2.5h | 2016-04-11 17:00 | 2016-04-11 19:30 | 47 |  |
| 84 |  | <Activate campaign pattern> activity diagram | 2.5h | 2016-04-11 17:00 | 2016-04-11 19:30 | 48 |  |
| 85 |  | <Produce a respond report of marketing campaignr> activity diagram | 2.5h | 2016-04-11 17:00 | 2016-04-11 19:30 | 49 |  |
| 86 |  | <Produce a period customer characterization report> activity diagram | 2.5h | 2016-04-11 17:00 | 2016-04-11 19:30 | 50 |  |
| 87 |  | <Send response> activity diagram | 2.5h | 2016-04-11 17:00 | 2016-04-11 19:30 | 51 |  |
| 88 |  | <Produce Quarterly Reports> activity diagram | 2.5h | 2016-04-11 17:00 | 2016-04-11 19:30 | 52 |  |
| 89 |  | <Approve fuel order> activity diagram | 2.5h | 2016-04-12 17:00 | 2016-04-12 19:30 | 53 |  |
| 90 |  | <Determining the threshold level for receiving alert> activity diagram | 2.5h | 2016-04-12 17:00 | 2016-04-12 19:30 | 54 |  |
| 91 |  | <Insert fuel stock> activity diagram | 2.5h | 2016-04-12 17:00 | 2016-04-12 19:30 | 55 |  |
| 92 |  | <Identify client details> activity diagram | 2.5h | 2016-04-12 17:00 | 2016-04-12 19:30 | 56 |  |
| 93 |  | <Send fuel sale> activity diagram | 2.5h | 2016-04-12 17:00 | 2016-04-12 19:30 | 57 |  |
| 94 |  | Meeting - Review Activity Diagram | 2.5h | 2016-04-12 17:00 | 2016-04-12 19:30 |  |  |
| 95 |  | Activity Diagram is finished | 0d | 2016-04-10 17:00 | 2016-04-10 17:00 |  |  |
| 96 | 5.1.2 | **week 4** | 7d | 2016-04-14 17:00 | 2016-04-24 22:00 |  |  |
| 97 | 5.1.2.1 | **Creating Sequence Diagrams** | 4d | 2016-04-15 17:00 | 2016-04-19 22:00 | 66 |  |
| 98 |  | <Viewing lab test referral> Sequence Diagram | 2.5h | 2016-04-15 17:00 | 2016-04-15 19:30 |  |  |
| 99 |  | <Insert lab test results> Sequence Diagram | 2.5h | 2016-04-15 17:00 | 2016-04-15 19:30 |  |  |
| 100 |  | <Add pictures> Sequence Diagram | 2.5h | 2016-04-15 17:00 | 2016-04-15 19:30 |  |  |
| 101 |  | <Logout>,<Login> Sequence Diagram | 2.5h | 2016-04-15 17:00 | 2016-04-15 19:30 |  |  |
| 102 |  | <View workers details> Sequence Diagram | 2.5h | 2016-04-17 17:00 | 2016-04-17 19:30 |  |  |
| 103 |  | <Insert weekly sales> Sequence Diagram | 2.5h | 2016-04-17 17:00 | 2016-04-17 19:30 |  |  |
| 104 |  | <Produce report for the last months> Sequence Diagram | 2.5h | 2016-04-17 17:00 | 2016-04-17 19:30 |  |  |
| 105 |  | <Produce report by N months> Sequence Diagram | 2.5h | 2016-04-17 17:00 | 2016-04-17 19:30 |  |  |
| 106 |  | <Announced for arrival> Sequence Diagram | 2.5h | 2016-04-17 17:00 | 2016-04-17 19:30 |  |  |
| 107 |  | <Viewing Medical history> Sequence Diagram | 2.5h | 2016-04-17 17:00 | 2016-04-17 19:30 |  |  |
| 108 |  | <Viewing Medical history> Sequence Diagram | 2.5h | 2016-04-17 17:00 | 2016-04-17 19:30 |  |  |
| 109 |  | <Send approve> Sequence Diagram | 2.5h | 2016-04-17 17:00 | 2016-04-17 19:30 |  |  |
| 110 |  | <make apponitment> Sequence Diagram | 2.5h | 2016-04-18 17:00 | 2016-04-18 19:30 |  |  |
| 111 |  | <Insert referral from doctor> Sequence Diagram | 2.5h | 2016-04-18 17:00 | 2016-04-18 19:30 |  |  |
| 112 |  | <Record appointment> Sequence Diagram | 2.5h | 2016-04-18 17:00 | 2016-04-18 19:30 |  |  |
| 113 |  | <verifying details> Sequence Diagram | 2.5h | 2016-04-18 17:00 | 2016-04-18 19:30 |  |  |
| 114 |  | <View patient medical history> Sequence Diagram | 2.5h | 2016-04-18 17:00 | 2016-04-18 19:30 |  |  |
| 115 |  | <Produce referral for lab test> Sequence Diagram | 2.5h | 2016-04-18 17:00 | 2016-04-18 19:30 |  |  |
| 116 |  | <view lab results> Sequence Diagram | 2.5h | 2016-04-18 17:00 | 2016-04-18 19:30 |  |  |
| 117 |  | <Ask for medical details> Sequence Diagram | 2.5h | 2016-04-18 17:00 | 2016-04-18 19:30 |  |  |
| 118 |  | <Send report to the referring doctor> Sequence Diagram | 2.5h | 2016-04-18 17:00 | 2016-04-18 19:30 |  |  |
| 119 |  | <Get medical details by expertise> Sequence Diagram | 2.5h | 2016-04-19 17:00 | 2016-04-19 19:30 |  |  |
| 120 |  | Meeting - Review Sequence Diagram | 2.5h | 2016-04-19 17:00 | 2016-04-19 19:30 |  |  |
| 121 |  | Sequence Diagram is finished | 1.8d | 2016-04-15 17:00 | 2016-04-17 21:00 |  |  |
| 122 |  | Creating Packages and Deployment diagrams | 1.5d | 2016-04-20 17:00 | 2016-04-21 19:30 | 66 |  |
| 123 |  | Meeting - Review Packages & Deployment Diagrams | 2h | 2016-04-22 17:00 | 2016-04-22 19:00 | 66, 72, 97, 122 |  |
| 124 |  | Packages & Deployment Diagrams are finished | 0d | 2016-04-14 17:00 | 2016-04-14 17:00 |  |  |
| 125 | 5.1.3 | **week 5** | 5d | 2016-04-25 17:00 | 2016-05-01 22:00 |  | 0d |
| 126 |  | Answer questions | 2h | 2016-04-25 17:00 | 2016-04-25 19:00 |  |  |
| 127 |  | Development Prototype on the base of OCSF | 3d | 2016-04-25 17:00 | 2016-04-27 22:00 | 7, 36 |  |
| 128 |  | Testing Prototype | 2d | 2016-04-28 17:00 | 2016-05-01 22:00 | 127 |  |
| 129 |  | Releasing Prototype | 0d | 2016-05-01 17:00 | 2016-05-01 17:00 |  |  |
| 130 |  | Submission TWO is finished | 0d | 2016-05-02 17:00 | 2016-05-02 17:00 |  |  |
| 131 | 7 | **Submission THREE: Development Code, Questions** | 33d | 2016-05-02 17:00 | 2016-06-15 22:00 | 129 |  |
| 132 | 7.1 | **Development project code on the base of Class and other diagrams** | 31d | 2016-05-02 17:00 | 2016-06-13 22:00 |  |  |
| 133 | 7.1.1 | **Development DataBase** | 3d | 2016-05-02 17:00 | 2016-05-04 22:00 |  |  |
| 134 | 7.1.1.1 | **week 6** | 3d | 2016-05-02 17:00 | 2016-05-04 22:00 |  |  |
| 135 |  | Defining and creating: <Name of Table 1>, <Name of Table 2> | 0.5d | 2016-05-02 17:00 | 2016-05-02 19:30 |  |  |
| 136 |  | Defining and creating <Name of Table 2> | 0.5d | 2016-05-02 17:00 | 2016-05-02 19:30 |  |  |
| 137 | 7.1.2 | **Realization Three-tier Model** | 25d | 2016-05-03 17:00 | 2016-06-06 22:00 |  |  |
| 138 | 7.1.2.1 | **Client Design and Realization** | 6d | 2016-05-03 17:00 | 2016-05-10 22:00 |  |  |
| 139 | 7.1.2.1.1 | **week 6** | 4d | 2016-05-03 17:00 | 2016-05-08 22:00 |  | 0d |
| 140 |  | Client GUI design and realization | 2d | 2016-05-03 17:00 | 2016-05-04 22:00 |  |  |

| ID | WBS | Task | Duration | Start | Finish | Predecessors | Total float |
| --- | --- | --- | --- | --- | --- | --- | --- |
| 141 |  | Defining Controllers and their realization | 2d | 2016-05-05 17:00 | 2016-05-08 22:00 |  |  |
| 142 | 7.1.2.1.2 | **week 7** | 1.5d | 2016-05-09 17:00 | 2016-05-10 19:30 |  | 0d |
| 143 |  | Testing & Debugging Code | 1.5d | 2016-05-09 17:00 | 2016-05-10 19:30 |  |  |
| 144 | 7.1.2.2 | **Server design and realization** | 13d | 2016-05-10 17:00 | 2016-05-26 22:00 |  |  |
| 145 | 7.1.2.2.1 | **week 7** | 5d | 2016-05-10 17:00 | 2016-05-16 22:00 |  | 0d |
| 146 |  | Server GUI | 2d | 2016-05-10 17:00 | 2016-05-11 22:00 |  |  |
| 147 |  | Realization interaction with DataBase | 2d | 2016-05-12 17:00 | 2016-05-15 22:00 |  |  |
| 148 |  | Testing & Debugging Code | 1d | 2016-05-16 17:00 | 2016-05-16 22:00 |  |  |
| 149 | 7.1.2.2.2 | **Realization Controllers** | 3d | 2016-05-24 17:00 | 2016-05-26 22:00 |  |  |
| 150 | 7.1.2.2.2.1 | **week 8** | 3d | 2016-05-24 17:00 | 2016-05-26 22:00 |  |  |
| 151 |  | Controller1, controller2 | 0.5d | 2016-05-24 17:00 | 2016-05-24 19:30 |  |  |
| 152 |  | Controller3 | 0.5d | 2016-05-24 17:00 | 2016-05-24 19:30 |  |  |
| 153 |  | Testing & Debugging Code | 1d | 2016-05-25 17:00 | 2016-05-25 22:00 |  |  |
| 154 | 7.1.2.3 | **Entity Realization JDBC/Hibernate (ORM) or their mix** | 4d | 2016-05-27 17:00 | 2016-05-31 22:00 |  |  |
| 155 | 7.1.2.3.1 | **week 8** | 4d | 2016-05-27 17:00 | 2016-05-31 22:00 |  |  |
| 156 |  | Realization <Entity1>, <Entity2>, <Entity3> | 3h | 2016-05-27 17:00 | 2016-05-27 20:00 |  |  |
| 157 |  | Realization <Entity4> | 1h | 2016-05-27 17:00 | 2016-05-27 18:00 |  |  |
| 158 | 7.1.2.4 | **week 9** | 7d | 2016-05-28 17:00 | 2016-06-05 22:00 |  |  |
| 159 |  | Realization Client-Server interaction on the base of OCSF | 6d | 2016-05-28 17:00 | 2016-06-02 22:00 |  |  |
| 160 |  | Testing & Debugging Code | 1.5d | 2016-06-03 17:00 | 2016-06-05 19:30 |  |  |
| 161 | 7.2 | **week 10** | 5d | 2016-06-06 17:00 | 2016-06-12 22:00 |  |  |
| 162 |  | Integration the Code | 2d | 2016-06-06 17:00 | 2016-06-07 22:00 |  |  |
| 163 |  | Final review meeting | 15h | 2016-06-08 17:00 | 2016-06-12 22:00 |  |  |
| 164 |  | Submission THREE is finished | 0d | 2016-06-13 17:00 | 2016-06-13 17:00 |  |  |
| 165 | 9 | **Submission FOUR: Testing Project** | 7d | 2016-06-13 17:00 | 2016-06-21 22:00 | 164 |  |
| 166 | 9.1 | **Testing Project** | 7d | 2016-06-13 17:00 | 2016-06-21 22:00 |  |  |
| 167 | 9.1.1 | **Unit Testing** | 2d | 2016-06-13 17:00 | 2016-06-14 22:00 |  |  |
| 168 | 9.1.1.1 | **week 10** | 2d | 2016-06-13 17:00 | 2016-06-14 22:00 |  | 0d |
| 169 |  | Functionality 1 (Method1(), Method2()) | 1d | 2016-06-13 17:00 | 2016-06-13 22:00 |  |  |
| 170 |  | Functionality 2 (Method1(), Method2()) | 1d | 2016-06-14 17:00 | 2016-06-14 22:00 |  |  |
| 171 | 9.1.2 | **Acceptance Testing** | 2d | 2016-06-15 17:00 | 2016-06-16 22:00 |  |  |
| 172 | 9.1.2.1 | **week 11** | 1d | 2016-06-15 17:00 | 2016-06-15 22:00 |  | 0d |
| 173 |  | Use Case 1 | 1d | 2016-06-15 17:00 | 2016-06-15 22:00 |  |  |
| 174 |  | Use Case 2 | 1d | 2016-06-15 17:00 | 2016-06-15 22:00 |  |  |
| 175 | 9.1.3 | **week 11** | 2d | 2016-06-16 17:00 | 2016-06-19 22:00 |  | 0d |
| 176 |  | Testing and Debugging | 2d | 2016-06-16 17:00 | 2016-06-19 22:00 |  |  |
| 177 |  | Submission FOUR is finished | 0d | 2016-06-21 17:00 | 2016-06-21 17:00 |  |  |
| 178 |  | Project is Finished! | 0d | 2016-06-21 17:00 | 2016-06-21 17:00 |  |  |

## Version 2 (data date 2016-04-03, saved 2016-04-03)

Note of the change: small change to the mmp file

Last finish stays 2016-06-21. Complete tasks 3 → 54.

Changed:

| ID | Task | Start | Finish | Complete | Predecessors | Other |
| --- | --- | --- | --- | --- | --- | --- |
| 1 | **Scope** | 2016-03-13 17:00 A | 2016-03-13 22:00 A | 0% → 100% |  |  |
| 2 | Define preliminary resources | 2016-03-13 17:00 A | 2016-03-13 22:00 A | 0% → 100% |  |  |
| 3 | Scope complete | 2016-03-13 17:00 A | 2016-03-13 17:00 A | 0% → 100% |  |  |
| 4 | **Submission ONE: Project Planning, Use Case Diagram, Questions, & Acceptance Testing** |  |  | 4% → 100% |  |  |
| 5 | **week 1** |  | 2016-03-22 22:00 A | 0% → 100% |  |  |
| 6 | Planning of a project |  | 2016-03-14 22:00 A | 0% → 100% |  |  |
| 7 | **Design of a system Step1** |  |  | 0% → 100% |  |  |
| 8 | Creating Use Case diagram |  | 2016-03-15 22:00 A | 0% → 100% |  |  |
| 9 | **Description of the Use Cases (Creating flow of events, info notes, etc.)** |  |  | 0% → 100% |  |  |
| 10 | Description of <Viewing lab test referral> |  | 2016-03-16 19:30 A | 0% → 100% |  |  |
| 11 | Description of <Insert lab test results> |  | 2016-03-16 19:30 A | 0% → 100% |  |  |
| 12 | Description of <Add pictures> |  | 2016-03-16 19:30 A | 0% → 100% |  |  |
| 13 | Description of <Logout>,<Login> |  | 2016-03-16 19:30 A | 0% → 100% |  |  |
| 14 | Description of <View workers details> |  | 2016-03-16 19:30 A | 0% → 100% |  |  |
| 15 | Description of <Produce report by period> |  | 2016-03-16 19:30 A | 0% → 100% |  |  |
| 16 | Description of <Produce report for the last months> |  | 2016-03-16 19:30 A | 0% → 100% |  |  |
| 17 | Description of <Produce report by N months> |  | 2016-03-16 19:30 A | 0% → 100% |  |  |
| 18 | Description of <Announced for arrival> |  | 2016-03-16 19:30 A | 0% → 100% |  |  |
| 19 | Description of <Viewing Medical history> |  | 2016-03-16 19:30 A | 0% → 100% |  |  |
| 20 | Description of <Send approve> |  | 2016-03-16 19:30 A | 0% → 100% |  |  |
| 21 | Description of <make apponitment> |  | 2016-03-16 19:30 A | 0% → 100% |  |  |
| 22 | Description of <Insert referral from doctor> |  | 2016-03-16 19:30 A | 0% → 100% |  |  |
| 23 | Description of <Record appointment> |  | 2016-03-16 19:30 A | 0% → 100% |  |  |
| 24 | Description of <verifying details> |  | 2016-03-16 19:30 A | 0% → 100% |  |  |
| 25 | Description of <View patient medical history> |  | 2016-03-16 19:30 A | 0% → 100% |  |  |
| 26 | Description of <Produce referral for lab test> |  | 2016-03-16 19:30 A | 0% → 100% |  |  |
| 27 | Description of <view lab results> |  | 2016-03-16 19:30 A | 0% → 100% |  |  |
| 28 | Description of <Ask for medical details> |  | 2016-03-20 19:30 A | 0% → 100% |  |  |
| 29 | Description of <Send report to the referring doctor> |  | 2016-03-20 19:30 A | 0% → 100% |  |  |
| 30 | Description of <Get medical details by expertise> |  | 2016-03-20 19:30 A | 0% → 100% |  |  |
| 31 | Meeting - Review Use Case Diagram |  | 2016-03-21 19:00 A | 0% → 100% |  |  |
| 32 | Fixing found problems |  | 2016-03-22 22:00 A | 0% → 100% |  |  |
| 33 | Use Case Diagram is finished |  | 2016-03-14 17:00 A | 99% → 100% |  |  |
| 34 | **week 2** |  |  | 8% → 100% |  |  |
| 36 | **Creating Acceptance Testing** |  | 2016-03-27 22:00 A | 9% → 100% |  |  |
| 37 | Test Case for functionality of <Viewing lab test referral> |  | 2016-03-24 19:30 A | 0% → 100% |  |  |
| 38 | Test Case for functionality of <Insert lab test results> |  | 2016-03-24 19:30 A | 0% → 100% |  |  |
| 39 | Test Case for functionality of <Add pictures> |  | 2016-03-24 19:30 A | 0% → 100% |  |  |
| 40 | Test Case for functionality of <Logout>,<Login> |  | 2016-03-24 19:30 A | 0% → 100% |  |  |
| 41 | Test Case for functionality of <View workers details> |  | 2016-03-24 19:30 A | 0% → 100% |  |  |
| 42 | Test Case for functionality of <Produce report by period> |  | 2016-03-24 19:30 A | 0% → 100% |  |  |
| 43 | Test Case for functionality of <Produce report for the last months> |  | 2016-03-24 19:30 A | 0% → 100% |  |  |
| 44 | Test Case for functionality of <Produce report by N months> |  | 2016-03-24 19:30 A | 0% → 100% |  |  |
| 45 | Test Case for functionality of <Announced for arrival> |  | 2016-03-27 19:30 A | 0% → 100% |  |  |
| 46 | Test Case for functionality of <Viewing Medical history> |  | 2016-03-27 19:30 A | 0% → 100% |  |  |
| 47 | Test Case for functionality of <Send approve> |  | 2016-03-27 19:30 A | 0% → 100% |  |  |
| 48 | Test Case for functionality of <make apponitment> |  | 2016-03-27 19:30 A | 0% → 100% |  |  |
| 49 | Test Case for functionality of <Insert referral from doctor> |  | 2016-03-27 19:30 A | 0% → 100% |  |  |
| 50 | Test Case for functionality of <Record appointment> |  | 2016-03-27 19:30 A | 0% → 100% |  |  |
| 51 | Test Case for functionality of <verifying details> |  | 2016-03-27 19:30 A | 0% → 100% |  |  |
| 52 | Test Case for functionality of <View patient medical history> |  | 2016-03-27 19:30 A | 0% → 100% |  |  |
| 53 | Test Case for functionality of <Produce referral for lab test> |  | 2016-03-27 19:30 A | 0% → 100% |  |  |
| 54 | Test Case for functionality of <view lab results> |  | 2016-03-27 19:30 A | 0% → 100% |  |  |
| 55 | Test Case for functionality of <Ask for medical details> |  | 2016-03-27 19:30 A | 0% → 100% |  |  |
| 56 | Test Case for functionality of <Send report to the referring doctor> |  | 2016-03-27 19:30 A | 0% → 100% |  |  |
| 57 | Test Case for functionality of <Get medical details by expertise> |  | 2016-03-27 19:30 A | 0% → 100% |  |  |
| 60 | Answer questions |  | 2016-03-29 19:30 A | 0% → 100% | none → 36 |  |
| 61 | Meeting - Review all tasks |  | 2016-03-30 19:30 A | 0% → 100% |  |  |
| 66 | **Creating Class diagram** |  |  |  | 6, 8 → none |  |
| 70 | Meeting - Review Class Diagram |  |  |  |  | resources none → Adi Eliahu [20%]; Guy Berger [20%]; Liran Uziel [20%]; Livnat Menashe [20%]; Yana Ostrovski [20%] |
