# G17_Answers.1

How a schedule from MS Project changed from version to version. A marks actual dates.

## Version 1 (data date 2016-04-03, saved 2016-05-01, file 17_Assignment2 .mpp)

| ID | WBS | Task | Duration | Start | Finish | Predecessors | Complete | Constraint |
| --- | --- | --- | --- | --- | --- | --- | --- | --- |
| 1 | 1 | **Scope** | 1d | 2016-03-13 17:00 A | 2016-03-13 22:00 A |  | 100% |  |
| 2 |  | Define preliminary resources | 1d | 2016-03-13 17:00 A | 2016-03-13 22:00 A |  | 100% |  |
| 3 |  | Scope complete | 0d | 2016-03-13 17:00 A | 2016-03-13 17:00 A |  | 100% | start no earlier than 2016-04-03 22:00 |
| 4 | 3 | **Submission ONE: Project Planning, Use Case Diagram, Questions, & Acceptance Testing** | 15d | 2016-03-14 17:00 A | 2016-04-03 22:00 |  | 100% |  |
| 5 | 3.1 | **week 1** | 7d | 2016-03-14 17:00 A | 2016-03-22 22:00 A |  | 100% |  |
| 6 |  | Planning of a project | 1d | 2016-03-14 17:00 A | 2016-03-14 22:00 A | 2 | 100% |  |
| 7 | 3.1.2 | **Design of a system Step1** | 4d | 2016-03-15 17:00 A | 2016-03-20 22:00 | 6 | 100% |  |
| 8 |  | Creating Use Case diagram | 1d | 2016-03-15 17:00 A | 2016-03-15 22:00 A | 6 | 100% |  |
| 9 | 3.1.2.2 | **Description of the Use Cases (Creating flow of events, info notes, etc.)** | 3d | 2016-03-16 17:00 A | 2016-03-20 22:00 | 8 | 100% |  |
| 10 |  | Description of <Viewing lab test referral> | 2.5h | 2016-03-16 17:00 A | 2016-03-16 19:30 A |  | 100% |  |
| 11 |  | Description of <Insert lab test results> | 2.5h | 2016-03-16 17:00 A | 2016-03-16 19:30 A |  | 100% |  |
| 12 |  | Description of <Add pictures> | 2.5h | 2016-03-16 17:00 A | 2016-03-16 19:30 A |  | 100% |  |
| 13 |  | Description of <Logout>,<Login> | 2.5h | 2016-03-16 17:00 A | 2016-03-16 19:30 A |  | 100% |  |
| 14 |  | Description of <View workers details> | 2.5h | 2016-03-16 17:00 A | 2016-03-16 19:30 A |  | 100% |  |
| 15 |  | Description of <Produce report by period> | 2.5h | 2016-03-16 17:00 A | 2016-03-16 19:30 A |  | 100% |  |
| 16 |  | Description of <Produce report for the last months> | 2.5h | 2016-03-16 17:00 A | 2016-03-16 19:30 A |  | 100% |  |
| 17 |  | Description of <Produce report by N months> | 2.5h | 2016-03-16 17:00 A | 2016-03-16 19:30 A |  | 100% |  |
| 18 |  | Description of <Announced for arrival> | 2.5h | 2016-03-16 17:00 A | 2016-03-16 19:30 A |  | 100% |  |
| 19 |  | Description of <Viewing Medical history> | 2.5h | 2016-03-16 17:00 A | 2016-03-16 19:30 A |  | 100% |  |
| 20 |  | Description of <Send approve> | 2.5h | 2016-03-16 17:00 A | 2016-03-16 19:30 A |  | 100% |  |
| 21 |  | Description of <make apponitment> | 2.5h | 2016-03-16 17:00 A | 2016-03-16 19:30 A |  | 100% |  |
| 22 |  | Description of <Insert referral from doctor> | 2.5h | 2016-03-16 17:00 A | 2016-03-16 19:30 A |  | 100% |  |
| 23 |  | Description of <Record appointment> | 2.5h | 2016-03-16 17:00 A | 2016-03-16 19:30 A |  | 100% |  |
| 24 |  | Description of <verifying details> | 2.5h | 2016-03-16 17:00 A | 2016-03-16 19:30 A |  | 100% |  |
| 25 |  | Description of <View patient medical history> | 2.5h | 2016-03-16 17:00 A | 2016-03-16 19:30 A |  | 100% |  |
| 26 |  | Description of <Produce referral for lab test> | 2.5h | 2016-03-16 17:00 A | 2016-03-16 19:30 A |  | 100% |  |
| 27 |  | Description of <view lab results> | 2.5h | 2016-03-16 17:00 A | 2016-03-16 19:30 A |  | 100% |  |
| 28 |  | Description of <Ask for medical details> | 2.5h | 2016-03-17 22:00 A | 2016-03-20 19:30 A |  | 100% |  |
| 29 |  | Description of <Send report to the referring doctor> | 2.5h | 2016-03-20 17:00 A | 2016-03-20 19:30 A |  | 100% |  |
| 30 |  | Description of <Get medical details by expertise> | 2.5h | 2016-03-20 17:00 A | 2016-03-20 19:30 A |  | 100% |  |
| 31 |  | Meeting - Review Use Case Diagram | 2h | 2016-03-21 17:00 A | 2016-03-21 19:00 A | 9 | 100% |  |
| 32 |  | Fixing found problems | 1d | 2016-03-22 17:00 A | 2016-03-22 22:00 A | 31 | 100% |  |
| 33 |  | Use Case Diagram is finished | 0d | 2016-03-14 17:00 A | 2016-03-14 17:00 A |  | 100% |  |
| 34 | 3.2 | **week 2** | 7d | 2016-03-22 17:00 A | 2016-03-30 22:00 |  | 100% |  |
| 35 |  | Creating Project Time Management | 0d | 2016-03-22 17:00 A | 2016-03-22 17:00 A | 8 | 100% |  |
| 36 | 3.2.2 | **Creating Acceptance Testing** | 3d | 2016-03-23 17:00 A | 2016-03-27 22:00 A | 9 | 100% |  |
| 37 |  | Test Case for functionality of <Viewing lab test referral> | 7.5h | 2016-03-23 17:00 A | 2016-03-24 19:30 A | 10 | 100% |  |
| 38 |  | Test Case for functionality of <Insert lab test results> | 7.5h | 2016-03-23 17:00 A | 2016-03-24 19:30 A | 11 | 100% |  |
| 39 |  | Test Case for functionality of <Add pictures> | 7.5h | 2016-03-23 17:00 A | 2016-03-24 19:30 A | 12 | 100% |  |
| 40 |  | Test Case for functionality of <Logout>,<Login> | 2.5h | 2016-03-23 17:00 A | 2016-03-24 19:30 A | 13 | 100% |  |
| 41 |  | Test Case for functionality of <View workers details> | 7.5h | 2016-03-23 17:00 A | 2016-03-24 19:30 A | 14 | 100% |  |
| 42 |  | Test Case for functionality of <Produce report by period> | 7.5h | 2016-03-23 17:00 A | 2016-03-24 19:30 A | 15 | 100% |  |
| 43 |  | Test Case for functionality of <Produce report for the last months> | 2.5h | 2016-03-23 17:00 A | 2016-03-24 19:30 A | 16 | 100% |  |
| 44 |  | Test Case for functionality of <Produce report by N months> | 7.5h | 2016-03-23 17:00 A | 2016-03-24 19:30 A | 17 | 100% |  |
| 45 |  | Test Case for functionality of <Announced for arrival> | 2.5h | 2016-03-24 17:00 A | 2016-03-27 19:30 A | 18 | 100% |  |
| 46 |  | Test Case for functionality of <Viewing Medical history> | 7.5h | 2016-03-24 17:00 A | 2016-03-27 19:30 A | 19 | 100% |  |
| 47 |  | Test Case for functionality of <Send approve> | 7.5h | 2016-03-24 17:00 A | 2016-03-27 19:30 A | 20 | 100% |  |
| 48 |  | Test Case for functionality of <make apponitment> | 7.5h | 2016-03-24 17:00 A | 2016-03-27 19:30 A | 21 | 100% |  |
| 49 |  | Test Case for functionality of <Insert referral from doctor> | 7.5h | 2016-03-24 17:00 A | 2016-03-27 19:30 A | 22 | 100% |  |
| 50 |  | Test Case for functionality of <Record appointment> | 7.5h | 2016-03-24 17:00 A | 2016-03-27 19:30 A | 23 | 100% |  |
| 51 |  | Test Case for functionality of <verifying details> | 7.5h | 2016-03-24 17:00 A | 2016-03-27 19:30 A | 24 | 100% |  |
| 52 |  | Test Case for functionality of <View patient medical history> | 7.5h | 2016-03-24 17:00 A | 2016-03-27 19:30 A | 25 | 100% |  |
| 53 |  | Test Case for functionality of <Produce referral for lab test> | 2.5h | 2016-03-27 17:00 A | 2016-03-27 19:30 A | 26 | 100% |  |
| 54 |  | Test Case for functionality of <view lab results> | 2.5h | 2016-03-27 17:00 A | 2016-03-27 19:30 A | 27 | 100% |  |
| 55 |  | Test Case for functionality of <Ask for medical details> | 2.5h | 2016-03-27 17:00 A | 2016-03-27 19:30 A | 28 | 100% |  |
| 56 |  | Test Case for functionality of <Send report to the referring doctor> | 2.5h | 2016-03-27 17:00 A | 2016-03-27 19:30 A | 29 | 100% |  |
| 57 |  | Test Case for functionality of <Get medical details by expertise> | 2.5h | 2016-03-27 17:00 A | 2016-03-27 19:30 A | 30 | 100% |  |
| 58 |  | Meeting - Review Acceptance Testing | 0h | 2016-03-27 17:00 A | 2016-03-27 17:00 A |  | 100% |  |
| 59 |  | Acceptance Testing is finished | 5h | 2016-03-27 17:00 A | 2016-03-27 22:00 A |  | 100% |  |
| 60 |  | Answer questions | 2.5h | 2016-03-29 17:00 A | 2016-03-29 19:30 A | 36 | 100% |  |
| 61 |  | Meeting - Review all tasks | 2.5h | 2016-03-30 17:00 A | 2016-03-30 19:30 A | 9, 35, 36, 8 | 100% |  |
| 62 |  | Submit assignment ONE | 0d | 2016-04-04 17:00 A | 2016-04-04 17:00 A |  | 100% |  |
| 63 | 5 | **Submission TWO: Class, Activity, Sequence, Package, Deployment Diagrams, Prototype, Questions** | 20d | 2016-04-05 17:00 A | 2016-05-02 22:00 | 62 | 99% |  |
| 64 | 5.1 | **Design of a system Step2** | 20d | 2016-04-05 17:00 A | 2016-05-02 22:00 |  | 99% |  |
| 65 | 5.1.1 | **week 3** | 7d | 2016-04-05 17:00 A | 2016-04-13 22:00 |  | 99% |  |
| 66 | 5.1.1.1 | **Creating Class diagram** | 3d | 2016-04-05 17:00 A | 2016-04-07 22:00 |  | 99% |  |
| 67 |  | Defining packages | 1d | 2016-04-05 17:00 | 2016-04-05 22:00 A |  | 100% |  |
| 68 |  | Defining Classes and Interfaces | 1.5d | 2016-04-06 17:00 | 2016-04-07 19:30 A |  | 100% |  |
| 69 |  | Defining APIs, Controllers, and Entities | 1.5d | 2016-04-06 17:00 | 2016-04-07 19:30 A |  | 100% |  |
| 70 |  | Meeting - Review Class Diagram | 2h | 2016-04-07 17:00 | 2016-04-07 19:00 A |  | 100% |  |

| ID | WBS | Task | Duration | Start | Finish | Predecessors | Complete | Total float |
| --- | --- | --- | --- | --- | --- | --- | --- | --- |
| 71 |  | Class Diagram is finished | 0d | 2016-04-05 17:00 | 2016-04-05 17:00 |  |  |  |
| 72 | 5.1.1.2 | **Creating Activity Diagrams** | 4d | 2016-04-10 17:00 A | 2016-04-13 22:00 | 9 | 99% |  |
| 73 |  | <Log in, Log out> activity diagrams | 2.5h | 2016-04-10 17:00 | 2016-04-10 19:30 A | 37 | 100% |  |
| 74 |  | <Updating client details> activity diagram | 2.5h | 2016-04-10 17:00 | 2016-04-10 19:30 A | 38 | 100% |  |
| 75 |  | <Order fuel for home use> activity diagram | 2.5h | 2016-04-10 17:00 | 2016-04-10 19:30 A | 39 | 100% |  |
| 76 |  | <Follow order> activity diagram | 2.5h | 2016-04-10 17:00 | 2016-04-10 19:30 A | 40 | 100% |  |
| 77 |  | <Client registration> activity diagram | 2.5h | 2016-04-10 17:00 | 2016-04-10 19:30 A | 41 | 100% |  |
| 78 |  | <Watch Quarterly Reports> activity diagram | 2.5h | 2016-04-10 17:00 | 2016-04-10 19:30 A | 42 | 100% |  |
| 79 |  | <Produce customer data rating> activity diagram | 2.5h | 2016-04-10 17:00 | 2016-04-10 19:30 A | 43 | 100% |  |
| 80 |  | <Campaign pattern defining> activity diagram | 2.5h | 2016-04-10 17:00 | 2016-04-10 19:30 A | 44 | 100% |  |
| 81 |  | <Update maximum fuel price> activity diagram | 2.5h | 2016-04-11 17:00 | 2016-04-11 19:30 A | 45 | 100% |  |
| 82 |  | <Planes Price change request> activity diagram | 2.5h | 2016-04-11 17:00 | 2016-04-11 19:30 A | 46 | 100% |  |
| 83 |  | <Update planes price> activity diagram | 2.5h | 2016-04-11 17:00 | 2016-04-11 19:30 A | 47 | 100% |  |
| 84 |  | <Activate campaign pattern> activity diagram | 2.5h | 2016-04-11 17:00 | 2016-04-11 19:30 A | 48 | 100% |  |
| 85 |  | <Produce a respond report of marketing campaignr> activity diagram | 2.5h | 2016-04-11 17:00 | 2016-04-11 19:30 A | 49 | 100% |  |
| 86 |  | <Produce a period customer characterization report> activity diagram | 2.5h | 2016-04-11 17:00 | 2016-04-11 19:30 A | 50 | 100% |  |
| 87 |  | <Send response> activity diagram | 2.5h | 2016-04-11 17:00 | 2016-04-11 19:30 A | 51 | 100% |  |
| 88 |  | <Produce Quarterly Reports> activity diagram | 2.5h | 2016-04-11 17:00 | 2016-04-11 19:30 A | 52 | 100% |  |
| 89 |  | <Approve fuel order> activity diagram | 2.5h | 2016-04-12 17:00 | 2016-04-12 19:30 A | 53 | 100% |  |
| 90 |  | <Determining the threshold level for receiving alert> activity diagram | 2.5h | 2016-04-12 17:00 | 2016-04-12 19:30 A | 54 | 100% |  |
| 91 |  | <Insert fuel stock> activity diagram | 2.5h | 2016-04-12 17:00 | 2016-04-12 19:30 A | 55 | 100% |  |
| 92 |  | <Identify client details> activity diagram | 2.5h | 2016-04-12 17:00 | 2016-04-12 19:30 A | 56 | 100% |  |
| 93 |  | <Send fuel sale> activity diagram | 2.5h | 2016-04-12 17:00 | 2016-04-12 19:30 A | 57 | 100% |  |
| 94 |  | Meeting - Review Activity Diagram | 2.5h | 2016-04-12 17:00 | 2016-04-12 19:30 A |  | 100% |  |
| 95 |  | Activity Diagram is finished | 0d | 2016-04-10 17:00 | 2016-04-10 17:00 |  |  |  |
| 96 | 5.1.2 | **week 4** | 7d | 2016-04-14 17:00 A | 2016-04-24 22:00 |  | 99% |  |
| 97 | 5.1.2.1 | **Creating Sequence Diagrams** | 4d | 2016-04-15 17:00 A | 2016-04-19 22:00 | 66 | 100% |  |
| 98 |  | <Viewing lab test referral> Sequence Diagram | 2.5h | 2016-04-15 17:00 | 2016-04-15 19:30 A |  | 100% |  |
| 99 |  | <Insert lab test results> Sequence Diagram | 2.5h | 2016-04-15 17:00 | 2016-04-15 19:30 A |  | 100% |  |
| 100 |  | <Add pictures> Sequence Diagram | 2.5h | 2016-04-15 17:00 | 2016-04-15 19:30 A |  | 100% |  |
| 101 |  | <Logout>,<Login> Sequence Diagram | 2.5h | 2016-04-15 17:00 | 2016-04-15 19:30 A |  | 100% |  |
| 102 |  | <View workers details> Sequence Diagram | 2.5h | 2016-04-17 17:00 | 2016-04-17 19:30 A |  | 100% |  |
| 103 |  | <Insert weekly sales> Sequence Diagram | 2.5h | 2016-04-17 17:00 | 2016-04-17 19:30 A |  | 100% |  |
| 104 |  | <Produce report for the last months> Sequence Diagram | 2.5h | 2016-04-17 17:00 | 2016-04-17 19:30 A |  | 100% |  |
| 105 |  | <Produce report by N months> Sequence Diagram | 2.5h | 2016-04-17 17:00 | 2016-04-17 19:30 A |  | 100% |  |
| 106 |  | <Announced for arrival> Sequence Diagram | 2.5h | 2016-04-17 17:00 | 2016-04-17 19:30 A |  | 100% |  |
| 107 |  | <Viewing Medical history> Sequence Diagram | 2.5h | 2016-04-17 17:00 | 2016-04-17 19:30 A |  | 100% |  |
| 108 |  | <Send approve> Sequence Diagram | 2.5h | 2016-04-17 17:00 | 2016-04-17 19:30 A |  | 100% |  |
| 109 |  | <make apponitment> Sequence Diagram | 2.5h | 2016-04-18 17:00 | 2016-04-18 19:30 A |  | 100% |  |
| 110 |  | <Insert referral from doctor> Sequence Diagram | 2.5h | 2016-04-18 17:00 | 2016-04-18 19:30 A |  | 100% |  |
| 111 |  | <Record appointment> Sequence Diagram | 2.5h | 2016-04-18 17:00 | 2016-04-18 19:30 A |  | 100% |  |
| 112 |  | <verifying details> Sequence Diagram | 2.5h | 2016-04-18 17:00 | 2016-04-18 19:30 A |  | 100% |  |
| 113 |  | <View patient medical history> Sequence Diagram | 2.5h | 2016-04-18 17:00 | 2016-04-18 19:30 A |  | 100% |  |
| 114 |  | <Produce referral for lab test> Sequence Diagram | 2.5h | 2016-04-18 17:00 | 2016-04-18 19:30 A |  | 100% |  |
| 115 |  | <view lab results> Sequence Diagram | 2.5h | 2016-04-18 17:00 | 2016-04-18 19:30 A |  | 100% |  |
| 116 |  | <Ask for medical details> Sequence Diagram | 2.5h | 2016-04-18 17:00 | 2016-04-18 19:30 A |  | 100% |  |
| 117 |  | <Send report to the referring doctor> Sequence Diagram | 2.5h | 2016-04-18 17:00 | 2016-04-18 19:30 A |  | 100% |  |
| 118 |  | <Get medical details by expertise> Sequence Diagram | 2.5h | 2016-04-19 17:00 | 2016-04-19 19:30 A |  | 100% |  |
| 119 |  | Meeting - Review Sequence Diagram | 2.5h | 2016-04-19 17:00 | 2016-04-19 19:30 A |  | 100% |  |
| 120 |  | Sequence Diagram is finished | 1.8d | 2016-04-15 17:00 | 2016-04-17 21:00 A |  | 100% |  |
| 121 |  | Creating Packages and Deployment diagrams | 1.5d | 2016-04-20 17:00 | 2016-04-21 19:30 A | 66 | 100% |  |
| 122 |  | Meeting - Review Packages & Deployment Diagrams | 2h | 2016-04-22 17:00 | 2016-04-22 19:00 A | 66, 72, 97, 121 | 100% |  |
| 123 |  | Packages & Deployment Diagrams are finished | 0d | 2016-04-14 17:00 | 2016-04-14 17:00 |  |  |  |
| 124 | 5.1.3 | **week 5** | 5d | 2016-04-25 17:00 A | 2016-05-01 22:00 |  | 99% | 0d |
| 125 |  | Answer questions | 2h | 2016-04-25 17:00 | 2016-04-25 19:00 A |  | 100% |  |
| 126 |  | Development Prototype on the base of OCSF | 3d | 2016-04-25 17:00 | 2016-04-27 22:00 A | 7, 36 | 100% |  |
| 127 |  | Testing Prototype | 2d | 2016-04-28 17:00 | 2016-05-01 22:00 A | 126 | 100% |  |
| 128 |  | Releasing Prototype | 0d | 2016-05-01 17:00 | 2016-05-01 17:00 |  |  |  |
| 129 |  | Submission TWO is finished | 0d | 2016-05-02 17:00 | 2016-05-02 17:00 |  |  |  |
| 130 | 7 | **Submission THREE: Development Code, Questions** | 33d | 2016-05-02 17:00 | 2016-06-15 22:00 | 128 |  |  |
| 131 | 7.1 | **Development project code on the base of Class and other diagrams** | 31d | 2016-05-02 17:00 | 2016-06-13 22:00 |  |  |  |
| 132 | 7.1.1 | **Development DataBase** | 3d | 2016-05-02 17:00 | 2016-05-04 22:00 |  |  |  |
| 133 | 7.1.1.1 | **week 6** | 3d | 2016-05-02 17:00 | 2016-05-04 22:00 |  |  |  |
| 134 |  | Defining and creating: <Name of Table 1>, <Name of Table 2> | 0.5d | 2016-05-02 17:00 | 2016-05-02 19:30 |  |  |  |
| 135 |  | Defining and creating <Name of Table 2> | 0.5d | 2016-05-02 17:00 | 2016-05-02 19:30 |  |  |  |
| 136 | 7.1.2 | **Realization Three-tier Model** | 25d | 2016-05-03 17:00 | 2016-06-06 22:00 |  |  |  |
| 137 | 7.1.2.1 | **Client Design and Realization** | 6d | 2016-05-03 17:00 | 2016-05-10 22:00 |  |  |  |
| 138 | 7.1.2.1.1 | **week 6** | 4d | 2016-05-03 17:00 | 2016-05-08 22:00 |  |  | 0d |
| 139 |  | Client GUI design and realization | 2d | 2016-05-03 17:00 | 2016-05-04 22:00 |  |  |  |
| 140 |  | Defining Controllers and their realization | 2d | 2016-05-05 17:00 | 2016-05-08 22:00 |  |  |  |

| ID | WBS | Task | Duration | Start | Finish | Predecessors | Total float |
| --- | --- | --- | --- | --- | --- | --- | --- |
| 141 | 7.1.2.1.2 | **week 7** | 1.5d | 2016-05-09 17:00 | 2016-05-10 19:30 |  | 0d |
| 142 |  | Testing & Debugging Code | 1.5d | 2016-05-09 17:00 | 2016-05-10 19:30 |  |  |
| 143 | 7.1.2.2 | **Server design and realization** | 13d | 2016-05-10 17:00 | 2016-05-26 22:00 |  |  |
| 144 | 7.1.2.2.1 | **week 7** | 5d | 2016-05-10 17:00 | 2016-05-16 22:00 |  | 0d |
| 145 |  | Server GUI | 2d | 2016-05-10 17:00 | 2016-05-11 22:00 |  |  |
| 146 |  | Realization interaction with DataBase | 2d | 2016-05-12 17:00 | 2016-05-15 22:00 |  |  |
| 147 |  | Testing & Debugging Code | 1d | 2016-05-16 17:00 | 2016-05-16 22:00 |  |  |
| 148 | 7.1.2.2.2 | **Realization Controllers** | 3d | 2016-05-24 17:00 | 2016-05-26 22:00 |  |  |
| 149 | 7.1.2.2.2.1 | **week 8** | 3d | 2016-05-24 17:00 | 2016-05-26 22:00 |  |  |
| 150 |  | Controller1, controller2 | 0.5d | 2016-05-24 17:00 | 2016-05-24 19:30 |  |  |
| 151 |  | Controller3 | 0.5d | 2016-05-24 17:00 | 2016-05-24 19:30 |  |  |
| 152 |  | Testing & Debugging Code | 1d | 2016-05-25 17:00 | 2016-05-25 22:00 |  |  |
| 153 | 7.1.2.3 | **Entity Realization JDBC/Hibernate (ORM) or their mix** | 4d | 2016-05-27 17:00 | 2016-05-31 22:00 |  |  |
| 154 | 7.1.2.3.1 | **week 8** | 4d | 2016-05-27 17:00 | 2016-05-31 22:00 |  |  |
| 155 |  | Realization <Entity1>, <Entity2>, <Entity3> | 3h | 2016-05-27 17:00 | 2016-05-27 20:00 |  |  |
| 156 |  | Realization <Entity4> | 1h | 2016-05-27 17:00 | 2016-05-27 18:00 |  |  |
| 157 | 7.1.2.4 | **week 9** | 7d | 2016-05-28 17:00 | 2016-06-05 22:00 |  |  |
| 158 |  | Realization Client-Server interaction on the base of OCSF | 6d | 2016-05-28 17:00 | 2016-06-02 22:00 |  |  |
| 159 |  | Testing & Debugging Code | 1.5d | 2016-06-03 17:00 | 2016-06-05 19:30 |  |  |
| 160 | 7.2 | **week 10** | 5d | 2016-06-06 17:00 | 2016-06-12 22:00 |  |  |
| 161 |  | Integration the Code | 2d | 2016-06-06 17:00 | 2016-06-07 22:00 |  |  |
| 162 |  | Final review meeting | 15h | 2016-06-08 17:00 | 2016-06-12 22:00 |  |  |
| 163 |  | Submission THREE is finished | 0d | 2016-06-13 17:00 | 2016-06-13 17:00 |  |  |
| 164 | 9 | **Submission FOUR: Testing Project** | 7d | 2016-06-13 17:00 | 2016-06-21 22:00 | 163 |  |
| 165 | 9.1 | **Testing Project** | 7d | 2016-06-13 17:00 | 2016-06-21 22:00 |  |  |
| 166 | 9.1.1 | **Unit Testing** | 2d | 2016-06-13 17:00 | 2016-06-14 22:00 |  |  |
| 167 | 9.1.1.1 | **week 10** | 2d | 2016-06-13 17:00 | 2016-06-14 22:00 |  | 0d |
| 168 |  | Functionality 1 (Method1(), Method2()) | 1d | 2016-06-13 17:00 | 2016-06-13 22:00 |  |  |
| 169 |  | Functionality 2 (Method1(), Method2()) | 1d | 2016-06-14 17:00 | 2016-06-14 22:00 |  |  |
| 170 | 9.1.2 | **Acceptance Testing** | 2d | 2016-06-15 17:00 | 2016-06-16 22:00 |  |  |
| 171 | 9.1.2.1 | **week 11** | 1d | 2016-06-15 17:00 | 2016-06-15 22:00 |  | 0d |
| 172 |  | Use Case 1 | 1d | 2016-06-15 17:00 | 2016-06-15 22:00 |  |  |
| 173 |  | Use Case 2 | 1d | 2016-06-15 17:00 | 2016-06-15 22:00 |  |  |
| 174 | 9.1.3 | **week 11** | 2d | 2016-06-16 17:00 | 2016-06-19 22:00 |  | 0d |
| 175 |  | Testing and Debugging | 2d | 2016-06-16 17:00 | 2016-06-19 22:00 |  |  |
| 176 |  | Submission FOUR is finished | 0d | 2016-06-21 17:00 | 2016-06-21 17:00 |  |  |
| 177 |  | Project is Finished! | 0d | 2016-06-21 17:00 | 2016-06-21 17:00 |  |  |

## Version 2 (data date 2016-04-03, saved 2016-05-03, file 17_Assignment2.mpp)

Note of the change: G2-ready

Last finish stays 2016-06-21.

Added:

| ID | Task | Duration | Start | Finish | Resources |
| --- | --- | --- | --- | --- | --- |
| 94 | Meeting - update class diagram | 2.5h | 2016-04-12 17:00 A | 2016-04-12 19:30 | Liran Uziel; Guy Berger |
| 120 | Meeting - update class diagram | 2.5h | 2016-04-19 17:00 A | 2016-04-19 22:00 A | Adi Eliahu; Livnat Menashe; Yana Ostrovski |

Changed:

| ID | Task | Start | Finish | Complete | Other |
| --- | --- | --- | --- | --- | --- |
| 63 | **Submission TWO: Class, Activity, Sequence, Package, Deployment Diagrams, Prototype, Questions** |  |  | 99% → 97% |  |
| 64 | **Design of a system Step2** |  |  | 99% → 97% |  |
| 65 | **week 3** |  |  | 99% → 97% |  |
| 67 | Defining packages | 2016-04-05 17:00 A |  |  |  |
| 68 | Defining Classes and Interfaces | 2016-04-06 17:00 A |  |  |  |
| 69 | Defining APIs, Controllers, and Entities | 2016-04-06 17:00 A |  |  |  |
| 70 | Meeting - Review Class Diagram | 2016-04-07 17:00 A |  |  |  |
| 72 | **Creating Activity Diagrams** |  |  | 99% → 96% |  |
| 73 | <Log in, Log out> activity diagrams | 2016-04-10 17:00 A |  |  |  |
| 74 | <Viewing lab test referral> activity diagram | 2016-04-10 17:00 A |  |  | was named <Updating client details> activity diagram; resources Adi Eliahu → Guy Berger |
| 75 | <Insert lab test results> activity diagram | 2016-04-10 17:00 A |  |  | was named <Order fuel for home use> activity diagram; resources Yana Ostrovski → Guy Berger |
| 76 | <Add pictures> activity diagram | 2016-04-10 17:00 A |  |  | was named <Follow order> activity diagram; resources Livnat Menashe → Guy Berger |
| 77 | <Produce report by period> activity diagram | 2016-04-10 17:00 A |  |  | was named <Client registration> activity diagram |
| 78 | <Produce report for the last months> activity diagram | 2016-04-10 17:00 A |  |  | was named <Watch Quarterly Reports> activity diagram; resources Adi Eliahu → Guy Berger |
| 79 | <Produce report by N months> activity diagram | 2016-04-10 17:00 A |  |  | was named <Produce customer data rating> activity diagram; resources Yana Ostrovski → Guy Berger |
| 80 | <Send approve> activity diagram | 2016-04-10 17:00 A |  |  | was named <Campaign pattern defining> activity diagram; resources Livnat Menashe → Guy Berger |
| 81 | <make apponitment> activity diagram | 2016-04-11 17:00 A |  |  | was named <Update maximum fuel price> activity diagram; resources Guy Berger → Liran Uziel |
| 82 | <Check appointment approval> activity diagram | 2016-04-11 17:00 A |  |  | was named <Planes Price change request> activity diagram; resources Adi Eliahu → Liran Uziel |
| 83 | <Identify patient> activity diagram | 2016-04-11 17:00 A |  |  | was named <Update planes price> activity diagram; resources Yana Ostrovski → Liran Uziel |
| 84 | <Record appointment> activity diagram | 2016-04-11 17:00 A |  |  | was named <Activate campaign pattern> activity diagram; resources Livnat Menashe → Liran Uziel |
| 85 | <View patient medical history> activity diagram | 2016-04-11 17:00 A |  |  | was named <Produce a respond report of marketing campaignr> activity diagram; resources Guy Berger → Liran Uziel |
| 86 | <verifying details> activity diagram | 2016-04-11 17:00 A |  |  | was named <Produce a period customer characterization report> activity diagram; resources Adi Eliahu → Liran Uziel |
| 87 | <Produce referral for lab test> activity diagram | 2016-04-11 17:00 A |  |  | was named <Send response> activity diagram; resources Yana Ostrovski → Liran Uziel |
| 88 | <view lab results> activity diagram | 2016-04-11 17:00 A |  |  | was named <Produce Quarterly Reports> activity diagram; resources Livnat Menashe → Liran Uziel |
| 89 | <Ask for medical details> activity diagram | 2016-04-12 17:00 A |  |  | was named <Approve fuel order> activity diagram; resources Guy Berger → Liran Uziel |
| 90 | <Send report to the referring doctor> activity diagram | 2016-04-12 17:00 A |  |  | was named <Determining the threshold level for receiving alert> activity diagram; resources Adi Eliahu → Liran Uziel |
| 91 | <Record report to medical file> activity diagram | 2016-04-12 17:00 A |  |  | was named <Insert fuel stock> activity diagram; resources Yana Ostrovski → Liran Uziel |
| 92 | <Get medical details by expertise> activity diagram | 2016-04-12 17:00 A |  |  | was named <Identify client details> activity diagram; resources Livnat Menashe → Liran Uziel |
| 93 | <Get Fully medical file> activity diagram | 2016-04-12 17:00 A |  |  | was named <Send fuel sale> activity diagram; resources Guy Berger → Liran Uziel |
| 95 | Meeting - Review Activity Diagram | 2016-04-12 17:00 A |  |  |  |
| 97 | **week 4** |  |  | 99% → 97% |  |
| 98 | **Creating Sequence Diagrams** |  |  | 100% → 96% |  |
| 99 | <Viewing lab test referral> Sequence Diagram | 2016-04-15 17:00 A |  |  | resources Guy Berger → Yana Ostrovski |
| 100 | <Insert lab test results> Sequence Diagram | 2016-04-15 17:00 A |  |  | resources Adi Eliahu → Yana Ostrovski |
| 101 | <Add pictures> Sequence Diagram | 2016-04-15 17:00 A |  |  |  |
| 102 | <Logout>,<Login> Sequence Diagram | 2016-04-15 17:00 A |  |  |  |
| 103 | <Canceling appointment> Sequence Diagram | 2016-04-17 17:00 A |  |  | was named <View workers details> Sequence Diagram; resources Guy Berger → Adi Eliahu |
| 104 | <View reports> Sequence Diagram | 2016-04-17 17:00 A |  |  | was named <Insert weekly sales> Sequence Diagram |
| 105 | <Produce report for the last months> Sequence Diagram | 2016-04-17 17:00 A |  |  | resources Yana Ostrovski → Adi Eliahu |
| 106 | <Produce report by N months> Sequence Diagram | 2016-04-17 17:00 A |  |  | resources Livnat Menashe → Adi Eliahu |
| 107 | <Produce monthly report> Sequence Diagram | 2016-04-17 17:00 A |  |  | was named <Announced for arrival> Sequence Diagram; resources Guy Berger → Adi Eliahu |
| 108 | <Viewing Medical history> Sequence Diagram | 2016-04-17 17:00 A |  |  | resources Adi Eliahu → Livnat Menashe |
| 109 | <Produce report> Sequence Diagram | 2016-04-17 17:00 A |  |  | was named <Send approve> Sequence Diagram; resources Livnat Menashe → Adi Eliahu |
| 110 | <make apponitment> Sequence Diagram | 2016-04-18 17:00 A |  |  | resources Guy Berger → Livnat Menashe |
| 111 | <Insert referral from doctor> Sequence Diagram | 2016-04-18 17:00 A |  |  | resources Adi Eliahu → Livnat Menashe |
| 112 | <Record appointment> Sequence Diagram | 2016-04-18 17:00 A |  |  | resources Yana Ostrovski → Livnat Menashe |
| 113 | <verifying details> Sequence Diagram | 2016-04-18 17:00 A |  |  | resources Adi Eliahu → Livnat Menashe |
| 114 | <View patient medical history> Sequence Diagram | 2016-04-18 17:00 A |  |  |  |
| 115 | <Produce referral for lab test> Sequence Diagram | 2016-04-18 17:00 A |  |  | resources Guy Berger → Yana Ostrovski |
| 116 | <view lab results> Sequence Diagram | 2016-04-18 17:00 A |  |  | resources Adi Eliahu → Yana Ostrovski |
| 117 | <Ask for medical details> Sequence Diagram | 2016-04-18 17:00 A |  |  |  |
| 118 | <Send report to the referring doctor> Sequence Diagram | 2016-04-18 17:00 A |  |  |  |
| 119 | <Get medical details by expertise> Sequence Diagram | 2016-04-19 17:00 A |  |  | resources Guy Berger → Livnat Menashe |
| 121 | Meeting - Review Sequence Diagram | 2016-04-19 17:00 A |  |  |  |
| 122 | Sequence Diagram is finished | 2016-04-15 17:00 A |  |  |  |
| 123 | Creating Packages and Deployment diagrams | 2016-04-20 17:00 A |  |  |  |
| 124 | Meeting - Review Packages & Deployment Diagrams | 2016-04-22 17:00 → 2016-04-24 17:00 A (+2d) | 2016-04-22 19:00 A → 2016-04-24 19:00 A (+2d) |  |  |
| 127 | Answer questions | 2016-04-25 17:00 A |  |  |  |
| 128 | Development Prototype on the base of OCSF | 2016-04-25 17:00 A |  |  |  |
| 129 | Testing Prototype | 2016-04-28 17:00 A |  |  |  |
